# Progetto Definitivo

Schedule from MS Project, 2026-01-15 to 2027-11-10, status date 2026-01-15, costs in €, A marks actual dates.

## Calendars

- Standard: Mon-Fri 09:00-13:00, 14:00-18:00; Sat-Sun off.

## Resources

| Resource | Rate |
| --- | --- |
| Allegri Max (PM) | 75 |
| Bianchi Maria Luisa (PS) | 75 |
| Ferri Luca (IA) | 55 |
| Bianco Giacomo (II1) | 60 |
| Verdi Alessandro (IIJ) | 35 |
| Dainelli Dario (IS) | 50 |
| Ruggeri Elena (CYB) | 55 |
| Montanari Giulia (RL) | 50 |
| Lattanzi Paolo (RS) | 55 |
| Floro Flores Antonio (SCN) | 60 |
| Conti Federica (IAE) | 45 |
| Rinaldi Stefano (MC) | 50 |
| Moretti Chiara (SC) | 30 |
| Valentini Enrico (AF) | 50 |
| Pieroni Alessandra (HR) | 45 |
| Neri Matteo (RI) | 55 |
| Pellegrini Simone (PD1) | 40 |
| Martini Laura (PD2) | 40 |
| Meggiorini Riccardo (ESE) | 50 |
| Sorrentino Stefano (RMA) | 40 |
| Inglese Roberto (DA) | 40 |
| Cacciatore Fabrizio (RTF) | 50 |
| Paloschi Alberto (RO) | 55 |
| Grimaldi Tommaso (IM) | 40 |
| Gamberini Alessandro (TA) | 38 |
| Ferretti Davide (RA) | 50 |
| Graziani Francesco (IIJ) | 35 |
| Gagliardini Roberto (IIJ) | 35 |
| NOTEBOOK AZIENDALI GESTIONE,Materiale,Pz |  |
| LICENZE MS PROJECT PRO,Materiale,Licenza |  |
| LICENZE OFFICE 365,Materiale,Licenza |  |
| CANCELLERIA UFFICIO,Materiale,Kit |  |
| UTENZE UFFICIO (LUCE/INTERNET),Costo, |  |
| AFFITTO SALA RIUNIONI,Materiale,Giornata |  |
| LICENZA PIATTAFORMA UTM,Materiale,Licenza |  |
| SERVER CLOUD TEST,Materiale,Canone |  |
| MONITOR 4K SALA CONTROLLO,Materiale,Pz |  |
| WORKSTATION PC HIGH-END,Materiale,Pz |  |
| CONNESSIONE SATELLITARE BACKUP,Costo, |  |
| DRONI FLOTTA LEGGERA (C5),Materiale,Drone |  |
| DRONI FLOTTA MEDIA (CARGO),Materiale,Drone |  |
| BATTERIE RICAMBIO LITIO,Materiale,Pz |  |
| SET ELICHE RISERVA,Materiale,Kit |  |
| TABLET RUGGED PILOTI,Materiale,Pz |  |
| ASSICURAZIONE DRONI RC,Materiale,Polizza |  |
| TASSE REGISTRAZIONE ENAC,Costo, |  |
| CEMENTO E CALCESTRUZZO,Materiale,Tonnellata |  |
| TRAVI ACCIAIO STRUTTURA,Materiale,Unità |  |
| PANNELLI FOTOVOLTAICI,Materiale,Pannello |  |
| MICRO-TURBINE EOLICHE,Materiale,Turbina |  |
| ARREDO MAGAZZINO E UFFICIO,Materiale,Blocco |  |
| SCAFFALATURE METALLICHE,Materiale,Metro |  |
| CAVI ELETTRICI INDUSTRIALI,Materiale,Bobina |  |
| NOLEGGIO GRU E MEZZI,Materiale,Giornata |  |
| STAZIONI RICARICA (DOCK),Materiale,Unità |  |
| SENSORI ATTERRAGGIO LASER,Materiale,Pz |  |
| CAVI RETE SCHERMATI,Materiale,Metro |  |
| ATTREZZATURA INSTALLAZIONE,Materiale,Kit |  |
| FIRMWARE GESTIONE BATTERIE,Costo, |  |
| SMART LOCKER MODULARI,Materiale,Locker |  |
| BASAMENTI CEMENTO PREFAB.,Materiale,Pz |  |
| ROUTER 5G INDUSTRIALI,Materiale,Pz |  |
| TELECAMERE SICUREZZA,Materiale,Pz |  |
| SIM DATI M2M,Materiale,Scheda |  |
| FURGONE TRASPORTO LOCKER,Materiale,Nolo |  |
| LICENZE APPLE DEVELOPER,Materiale,Licenza |  |
| LICENZE GOOGLE PLAY,Materiale,Licenza |  |
| CREDITI CLOUD (AWS/AZURE),Costo, |  |
| TOOL PENETRATION TEST,Materiale,Licenza |  |
| SMARTPHONE TEST (ANDROID),Materiale,Pz |  |
| IPHONE/IPAD TEST,Materiale,Pz |  |
| BUDGET ADS SOCIAL,Costo, |  |
| BUDGET GOOGLE ADS,Costo, |  |
| SPAZI EVENTI PIAZZA,Materiale,Affitto |  |
| VOLANTINI E BROCHURE,Materiale,Pacco |  |
| ROLL-UP E BANNER,Materiale,Pz |  |
| GADGET PROMOZIONALI,Materiale,Box |  |
| CONSULENZA RICERCA UNIVPM,Costo, |  |
| SPESE LEGALI BREVETTI,Costo, |  |
| COMPONENTI ELETTRONICI PROTO,Materiale,Kit |  |

## Schedule

| ID | WBS | Task | Type | Duration | Start | Finish | Predecessors | Complete | Remaining | Baseline start | Baseline finish | Baseline duration | Total slack | Free slack | Constraint | Resources | Work | Actual work | Cost | Baseline cost | Actual cost |
| --- | --- | --- | --- | --- | --- | --- | --- | --- | --- | --- | --- | --- | --- | --- | --- | --- | --- | --- | --- | --- | --- |
| 1 | 1 | **OR0** |  | 475d | 2026-01-15 A | 2027-11-10 |  |  | 474.89d | 2026-01-15 | 2027-11-10 | 475d? | 0d |  |  |  | 601311h | 81.46h | 6,474,960 | 6,464,240 | 2,000 |
| 2 | 1.1 | **OR1** |  | 475d | 2026-01-15 A | 2027-11-10 |  |  | 474.47d | 2026-01-15 | 2027-11-10 | 475d | 0d |  |  | NOTEBOOK AZIENDALI GESTIONE,Materiale,Pz [300%]; LICENZE MS PROJECT PRO,Materiale,Licenza [200%]; LICENZE OFFICE 365,Materiale,Licenza [300%]; CANCELLERIA UFFICIO,Materiale,Kit [1000%]; UTENZE UFFICIO (LUCE/INTERNET),Costo,; AFFITTO SALA RIUNIONI,Materiale,Giornata | 77047.3h | 81.46h | 431,500 | 431,500 | 2,000 |
| 3 | 1.1.1 | Task 1.1 - Avvio |  | 15d | 2026-01-15 A | 2026-02-04 |  | 7% | 14d | 2026-01-15 | 2026-02-04 | 15d | 0d |  | start no earlier than 2026-01-15 | Allegri Max (PM) | 120h | 8h | 29,000 | 29,000 | 2,000 |
| 4 | 1.1.2 | Milestone 1 | milestone | 0d | 2026-02-04 | 2026-02-04 | 3 |  |  | 2026-02-04 | 2026-02-04 | 0d | 460d |  |  |  |  |  |  |  |  |
| 5 | 1.1.3 | D1.1 - Redazione Project Charter | milestone | 0d | 2026-02-04 | 2026-02-04 | 3 |  |  | 2026-02-04 | 2026-02-04 | 0d | 460d | 0d |  |  |  |  |  |  |  |
| 6 | 1.1.4 | Task 1.2 - Pianificazione |  | 45d | 2026-02-05 | 2026-04-08 | 3 |  |  | 2026-02-05 | 2026-04-08 | 45d | 0d |  |  | Allegri Max (PM) | 360h |  | 77,000 | 77,000 |  |
| 7 | 1.1.5 | D1.2 - Registro degli Stakeholder | milestone | 0d | 2026-02-04 | 2026-02-04 | 5, 3 |  |  | 2026-02-04 | 2026-02-04 | 0d | 460d | 0d |  |  |  |  |  |  |  |
| 8 | 1.1.6 | D1.3 - Project Management Plan | milestone | 0d | 2026-02-04 | 2026-02-04 | 5, 3 |  |  | 2026-02-04 | 2026-02-04 | 0d | 460d | 0d |  |  |  |  |  |  |  |
| 9 | 1.1.7 | Task 1.3 - Esecuzione |  | 410d | 2026-04-09 | 2027-11-03 | 6 |  |  | 2026-04-09 | 2027-11-03 | 410d | 5d |  |  | Allegri Max (PM) [5%] | 164h |  | 192,300 | 192,300 |  |
| 10 | 1.1.8 | Task 1.4 - Monitoraggio e controllo |  | 410d | 2026-04-09 | 2027-11-03 | 6 |  |  | 2026-04-09 | 2027-11-03 | 410d | 5d | 0d |  | Allegri Max (PM) [5%]; Valentini Enrico (AF) [10%] | 492h |  | 88,700 | 88,700 |  |
| 11 | 1.1.9 | D1.4 - Registro delle modifiche | milestone | 0d | 2027-11-03 | 2027-11-03 | 10 |  |  | 2027-11-03 | 2027-11-03 | 0d | 5d |  |  |  |  |  |  |  |  |
| 12 | 1.1.10 | D1.5 - Registro delle questioni | milestone | 0d | 2027-11-03 | 2027-11-03 | 10 |  |  | 2027-11-03 | 2027-11-03 | 0d | 5d |  |  |  |  |  |  |  |  |
| 13 | 1.1.11 | D1.6 - Registro degli Assunti | milestone | 0d | 2027-11-03 | 2027-11-03 | 10 |  |  | 2027-11-03 | 2027-11-03 | 0d | 5d |  |  |  |  |  |  |  |  |
| 14 | 1.1.12 | D1.7 - Registro dei Rischi | milestone | 0d | 2027-11-03 | 2027-11-03 | 10 |  |  | 2027-11-03 | 2027-11-03 | 0d | 5d |  |  |  |  |  |  |  |  |
| 15 | 1.1.13 | D1.8 - Registro delle lessons learned | milestone | 0d | 2027-11-03 | 2027-11-03 | 10 |  |  | 2027-11-03 | 2027-11-03 | 0d | 5d |  |  |  |  |  |  |  |  |
| 16 | 1.1.14 | Task 1.5 - Chiusura progetto |  | 15d | 2027-10-20 | 2027-11-10 | 48, 62, 90, 105 |  |  | 2027-10-20 | 2027-11-10 | 15d | 0d |  | finish no later than 2027-11-10 | Allegri Max (PM); Bianchi Maria Luisa (PS) [50%] | 60h |  | 44,500 | 44,500 |  |
| 17 | 1.1.15 | D1.9 - Documento di chiusura | milestone | 0d | 2027-11-10 | 2027-11-10 | 16 |  |  | 2027-11-10 | 2027-11-10 | 0d | 0d |  |  |  |  |  |  |  |  |
| 18 | 1.1.16 | Milestone 10 | milestone | 0d | 2027-11-10 | 2027-11-10 | 17 |  |  | 2027-11-10 | 2027-11-10 | 0d | 0d |  |  |  |  |  |  |  |  |
| 19 | 1.2 | **OR2** |  | 384d | 2026-04-09 | 2027-09-28 |  |  |  | 2026-04-09 | 2027-09-28 | 384d | 0d |  |  | LICENZA PIATTAFORMA UTM,Materiale,Licenza; SERVER CLOUD TEST,Materiale,Canone; MONITOR 4K SALA CONTROLLO,Materiale,Pz [400%]; WORKSTATION PC HIGH-END,Materiale,Pz [400%]; CONNESSIONE SATELLITARE BACKUP,Costo, | 36716h |  | 840,340 | 840,340 |  |
| 20 | 1.2.1 | Task 2.1 - Analisi requisiti |  | 10d | 2026-04-09 | 2026-04-22 | 6 |  |  | 2026-04-09 | 2026-04-22 | 10d | 0d |  |  | Bianco Giacomo (II1); Verdi Alessandro (IIJ) [50%] | 120h |  | 36,200 | 36,200 |  |
| 21 | 1.2.2 | Task 2.2 - Approvvigionamento |  | 10d | 2026-04-23 | 2026-05-06 | 20 |  |  | 2026-04-23 | 2026-05-06 | 10d | 0d |  | finish no later than 2026-05-06 | Ferretti Davide (RA) | 80h |  | 204,000 | 204,000 |  |
| 22 | 1.2.3 | Milestone 2 | milestone | 0d | 2026-05-06 | 2026-05-06 | 21, 33 |  |  | 2026-05-06 | 2026-05-06 | 0d | 395d |  |  |  |  |  |  |  |  |
| 23 | 1.2.4 | Task 2.3 - Configurazione moduli core |  | 80d | 2026-06-18 | 2026-10-07 | 21 |  |  | 2026-06-18 | 2026-10-07 | 80d | 20d | 0d |  | Bianco Giacomo (II1) [20%]; Verdi Alessandro (IIJ) [80%]; Dainelli Dario (IS) [50%]; Graziani Francesco (IIJ) [80%] | 1472h |  | 239,520 | 239,520 |  |
| 24 | 1.2.5 | Task 2.4 - Integrazione con ENAV/ENAC |  | 80d | 2026-10-08 | 2027-01-27 | 23 |  |  | 2026-10-08 | 2027-01-27 | 80d | 151d | 120d |  | Floro Flores Antonio (SCN) [50%]; Gagliardini Roberto (IIJ) | 600h |  | 106,000 | 106,000 |  |
| 25 | 1.2.6 | Task 2.5 - Integrazione modulo tracciamento real-time |  | 15d | 2027-06-24 | 2027-07-14 | 23 |  |  | 2027-06-24 | 2027-07-14 | 15d | 31d | 0d |  | Verdi Alessandro (IIJ) [50%]; Cacciatore Fabrizio (RTF) | 180h |  | 58,100 | 58,100 |  |
| 26 | 1.2.7 | Task 2.6 - Collaudo e simulazione |  | 15d | 2027-07-15 | 2027-08-04 | 24, 25 |  |  | 2027-07-15 | 2027-08-04 | 15d | 31d | 0d |  | Cacciatore Fabrizio (RTF) | 120h |  | 56,000 | 56,000 |  |
| 27 | 1.2.8 | Task 2.7 - Test delle rotte operative |  | 15d | 2027-08-05 | 2027-08-25 | 26, 41 |  |  | 2027-08-05 | 2027-08-25 | 15d | 31d | 0d |  | Pellegrini Simone (PD1); Martini Laura (PD2) | 240h |  | 79,600 | 79,600 |  |
| 28 | 1.2.9 | Task 2.8 - Validazione ENAC/ENAV |  | 20d | 2027-08-26 | 2027-09-22 | 27 |  |  | 2027-08-26 | 2027-09-22 | 20d | 31d | 0d |  | Floro Flores Antonio (SCN) [50%] | 80h |  | 44,800 | 44,800 |  |
| 29 | 1.2.10 | D2.1 - Piattaforma UTM | milestone | 0d | 2027-09-22 | 2027-09-22 | 28 |  |  | 2027-09-22 | 2027-09-22 | 0d | 35d |  |  |  |  |  |  |  |  |
| 30 | 1.2.11 | Task 2.9 - Redazione manuale operativo UTM |  | 4d | 2027-09-23 | 2027-09-28 | 28 |  |  | 2027-09-23 | 2027-09-28 | 4d | 31d | 0d |  | Graziani Francesco (IIJ) | 32h |  | 16,120 | 16,120 |  |
| 31 | 1.2.12 | D2.2 - Manuale operativo UTM | milestone | 0d | 2027-09-28 | 2027-09-28 | 30 |  |  | 2027-09-28 | 2027-09-28 | 0d | 31d |  |  |  |  |  |  |  |  |

| ID | WBS | Task | Type | Duration | Start | Finish | Predecessors | Baseline start | Baseline finish | Baseline duration | Total slack | Free slack | Constraint | Resources | Work | Cost | Baseline cost |
| --- | --- | --- | --- | --- | --- | --- | --- | --- | --- | --- | --- | --- | --- | --- | --- | --- | --- |
| 32 | 1.3 | **OR3** |  | 400d | 2026-04-09 | 2027-10-20 |  | 2026-04-09 | 2027-10-20 | 400d | 0d |  |  | ASSICURAZIONE DRONI RC,Materiale,Polizza [2100%]; TASSE REGISTRAZIONE ENAC,Costo, [2100%]; TABLET RUGGED PILOTI,Materiale,Pz; SET ELICHE RISERVA,Materiale,Kit [4200%] | 276112h | 1,329,600 | 1,329,600 |
| 33 | 1.3.1 | Task 3.1 Analisi dei requisiti |  | 20d | 2026-04-09 | 2026-05-06 | 6 | 2026-04-09 | 2026-05-06 | 20d | 0d |  |  | Ferri Luca (IA) | 160h | 28,800 | 28,800 |
| 34 | 1.3.2 | Task 3.2 Approvvigionamento |  | 45d | 2026-05-07 | 2026-07-08 | 33 | 2026-05-07 | 2026-07-08 | 45d | 0d |  | finish no later than 2026-07-08 | Ferretti Davide (RA) | 360h | 623,000 | 623,000 |
| 35 | 1.3.3 | D3.1 - Flotta leggera | milestone | 0d | 2026-07-08 | 2026-07-08 | 34 | 2026-07-08 | 2026-07-08 | 0d | 350d | 80d |  |  |  |  |  |
| 36 | 1.3.4 | D3.2 - Flotta media | milestone | 0d | 2026-07-08 | 2026-07-08 | 34 | 2026-07-08 | 2026-07-08 | 0d | 350d | 80d |  |  |  |  |  |
| 37 | 1.3.5 | Task 3.3 Verifica componenti e test di accettazione |  | 15d | 2026-07-09 | 2026-07-29 | 34 | 2026-07-09 | 2026-07-29 | 15d | 211d | 0d |  | Conti Federica (IAE); Ferri Luca (IA) [50%] | 180h | 23,700 | 23,700 |
| 38 | 1.3.6 | Task 3.4 Preparazione e configurazione operativa |  | 40d | 2026-07-30 | 2026-09-23 | 37 | 2026-07-30 | 2026-09-23 | 40d | 211d | 103.29d |  | Ferri Luca (IA); Gamberini Alessandro (TA) | 640h | 149,760 | 149,760 |
| 39 | 1.3.7 | Task 3.5 Configurazione con UTM |  | 30.83d | 2026-10-08 | 2027-02-16 | 23 | 2026-10-08 | 2027-02-16 | 30.83d | 107.71d | 0d |  | Bianco Giacomo (II1) [10%]; Gagliardini Roberto (IIJ) [80%]; Dainelli Dario (IS) [20%] | 480h | 49,200 | 49,200 |
| 40 | 1.3.8 | Task 3.6 - Test statici e dinamici |  | 25d | 2027-02-16 | 2027-03-23 | 38, 39 | 2027-02-16 | 2027-03-23 | 25d | 107.71d | 0d |  | Lattanzi Paolo (RS) [50%]; Cacciatore Fabrizio (RTF) | 300h | 55,500 | 55,500 |
| 41 | 1.3.9 | Task 3.7 - Test rotte operative |  | 20d | 2027-03-23 | 2027-04-20 | 39, 40 | 2027-03-23 | 2027-04-20 | 20d | 107.71d | 0d |  | Cacciatore Fabrizio (RTF); Pellegrini Simone (PD1) | 320h | 39,400 | 39,400 |
| 42 | 1.3.10 | Task 3.8 - Collaudo ENAC e certificazione BVLOS |  | 360d | 2026-05-07 | 2027-09-22 | 33 | 2026-05-07 | 2027-09-22 | 360d | 0d |  |  | Lattanzi Paolo (RS) [20%]; Floro Flores Antonio (SCN) [20%] | 1152h | 216,240 | 216,240 |
| 43 | 1.3.11 | Milestone 6 | milestone | 0d | 2027-09-22 | 2027-09-22 | 40, 41, 42 | 2027-09-22 | 2027-09-22 | 0d | 35d |  |  |  |  |  |  |
| 44 | 1.3.12 | D3.3 - Certificazione operativa | milestone | 0d | 2027-09-22 | 2027-09-22 | 42 | 2027-09-22 | 2027-09-22 | 0d | 35d |  |  |  |  |  |  |
| 45 | 1.3.13 | Task 3.9 - Approvvigionamento pezzi di ricambio |  | 10d | 2027-09-23 | 2027-10-06 | 42 | 2027-09-23 | 2027-10-06 | 10d | 25d |  |  | Ferretti Davide (RA) | 80h | 74,000 | 74,000 |
| 46 | 1.3.14 | Task 3.10 - Piano di manutenzione e manuali tecnici |  | 15d | 2027-04-20 | 2027-05-11 | 41 | 2027-04-20 | 2027-05-11 | 15d | 131.71d | 0d |  | Grimaldi Tommaso (IM) | 120h | 24,800 | 24,800 |
| 47 | 1.3.15 | D3.4 - Piano di manutenzione e manuali tecnici | milestone | 0d | 2027-05-11 | 2027-05-11 | 46 | 2027-05-11 | 2027-05-11 | 0d | 131.71d |  |  |  |  |  |  |
| 48 | 1.3.16 | Task 3.11 - Manuale operativo e training piloti |  | 20d | 2027-09-23 | 2027-10-20 | 42 | 2027-09-23 | 2027-10-20 | 20d | 0d |  |  | Paloschi Alberto (RO); Martini Laura (PD2) | 320h | 45,200 | 45,200 |
| 49 | 1.3.17 | D3.5 - Manuale operativo e training piloti | milestone | 0d | 2027-10-20 | 2027-10-20 | 48 | 2027-10-20 | 2027-10-20 | 0d | 15d |  |  |  |  |  |  |
| 50 | 1.4 | **OR4** |  | 405d | 2026-04-09 | 2027-10-27 |  | 2026-04-09 | 2027-10-27 | 405d | 0d |  |  | PANNELLI FOTOVOLTAICI,Materiale,Pannello [4000%]; SCAFFALATURE METALLICHE,Materiale,Metro [2000%]; CAVI ELETTRICI INDUSTRIALI,Materiale,Bobina; NOLEGGIO GRU E MEZZI,Materiale,Giornata | 203316h | 2,042,780 | 2,043,580 |
| 51 | 1.4.1 | Task 4.1 - Analisi dei requisiti |  | 20d | 2026-04-09 | 2026-05-06 | 6 | 2026-04-09 | 2026-05-06 | 20d | 0d |  |  | Montanari Giulia (RL); Allegri Max (PM) [50%] | 240h | 34,000 | 34,000 |
| 52 | 1.4.2 | Task 4.2 - Progettazione architettonica |  | 35d | 2026-05-07 | 2026-06-24 | 51 | 2026-05-07 | 2026-06-24 | 35d | 0d |  |  | Ferretti Davide (RA) [50%]; Montanari Giulia (RL) [50%] | 280h | 87,000 | 87,000 |
| 53 | 1.4.3 | Task 4.3 - Permessi edilizi, portuali, ambientali |  | 90d | 2026-06-25 | 2026-10-28 | 52 | 2026-06-25 | 2026-10-28 | 90d | 0d |  | finish no later than 2026-10-28 | Neri Matteo (RI) [5%] | 36h | 41,980 | 41,980 |
| 54 | 1.4.4 | Milestone 3 | milestone | 0d | 2027-02-03 | 2027-02-03 | 52, 80 | 2027-02-03 | 2027-02-03 | 0d | 200d |  |  |  |  |  |  |
| 55 | 1.4.5 | Task 4.4 - Approvvigionamento materiali |  | 20d | 2026-10-29 | 2026-11-25 | 53 | 2026-10-29 | 2026-11-25 | 20d | 250d |  |  | Ferretti Davide (RA) | 160h | 458,000 | 458,000 |
| 56 | 1.4.6 | Task 4.5 - Costruzione struttura principale dell’hub |  | 120d | 2026-10-29 | 2027-04-14 | 53 | 2026-10-29 | 2027-04-14 | 120d | 5d | 0d | start no earlier than 2026-10-29 | Montanari Giulia (RL) [50%] | 480h | 404,000 | 404,800 |
| 57 | 1.4.7 | Task 4.6 - Costruzione area Dronedock integrata |  | 50d | 2027-04-15 | 2027-06-23 | 56 | 2027-04-15 | 2027-06-23 | 50d | 5d | 0d |  | Montanari Giulia (RL) [50%] | 200h | 352,000 | 352,000 |
| 58 | 1.4.8 | Milestone 4 | milestone | 0d | 2027-06-23 | 2027-06-23 | 34, 57, 56, 83 | 2027-06-23 | 2027-06-23 | 0d | 100d |  |  |  |  |  |  |
| 59 | 1.4.9 | Task 4.7 - Realizzazione impianti elettrici, fotovoltaici, micro-eolici |  | 40d | 2027-04-15 | 2027-06-09 | 56 | 2027-04-15 | 2027-06-09 | 40d | 15d | 10d |  | Meggiorini Riccardo (ESE) | 320h | 316,000 | 316,000 |
| 60 | 1.4.10 | Task 4.8 - Allestimento interno |  | 40d | 2027-06-24 | 2027-08-18 | 57, 59 | 2027-06-24 | 2027-08-18 | 40d | 5d | 0d |  | Montanari Giulia (RL) | 320h | 196,000 | 196,000 |
| 61 | 1.4.11 | Task 4.9 - Integrazione rete UTM + sistemi di controllo locale |  | 20d | 2027-08-19 | 2027-09-15 | 60 | 2027-08-19 | 2027-09-15 | 20d | 5d | 0d |  | Graziani Francesco (IIJ) | 160h | 95,600 | 95,600 |
| 62 | 1.4.12 | Task 4.10 - Collaudi strutturali e impiantistici |  | 20d | 2027-09-16 | 2027-10-13 | 61 | 2027-09-16 | 2027-10-13 | 20d | 5d | 0d |  | Lattanzi Paolo (RS) | 160h | 53,800 | 53,800 |
| 63 | 1.4.13 | D4.1 - Droneport | milestone | 0d | 2027-10-13 | 2027-10-13 | 62 | 2027-10-13 | 2027-10-13 | 0d | 20d |  |  |  |  |  |  |
| 64 | 1.4.14 | Task 4.11 - Redazione manuali operativi |  | 10d | 2027-10-14 | 2027-10-27 | 62 | 2027-10-14 | 2027-10-27 | 10d | 10d | 0d |  | Lattanzi Paolo (RS) | 80h | 4,400 | 4,400 |
| 65 | 1.4.15 | D4.2 - Manuali operativi Droneport | milestone | 0d | 2027-10-27 | 2027-10-27 | 64 | 2027-10-27 | 2027-10-27 | 0d | 10d |  |  |  |  |  |  |

| ID | WBS | Task | Type | Duration | Start | Finish | Predecessors | Baseline start | Baseline finish | Baseline duration | Total slack | Free slack | Constraint | Resources | Work | Cost | Baseline cost |
| --- | --- | --- | --- | --- | --- | --- | --- | --- | --- | --- | --- | --- | --- | --- | --- | --- | --- |
| 66 | 1.5 | **OR5** |  | 340d | 2026-06-25 | 2027-10-13 |  | 2026-06-25 | 2027-10-13 | 340d | 20d |  |  |  | 1500h | 341,620 | 341,620 |
| 67 | 1.5.1 | Task 5.1 - Analisi dei requisiti |  | 15d | 2026-06-25 | 2026-07-15 | 52 | 2026-06-25 | 2026-07-15 | 15d | 80d | 60d |  | Montanari Giulia (RL); Lattanzi Paolo (RS) [50%] | 180h | 29,300 | 29,300 |
| 68 | 1.5.2 | Task 5.2 - Integrazione sistema UTM |  | 30d | 2026-10-08 | 2026-11-18 | 67, 23 | 2026-10-08 | 2026-11-18 | 30d | 20d | 0d |  | Dainelli Dario (IS) [20%]; Graziani Francesco (IIJ) [80%] | 240h | 59,120 | 59,120 |
| 69 | 1.5.3 | Task 5.3 - Configurazione |  | 30d | 2027-05-13 | 2027-06-23 | 68 | 2027-05-13 | 2027-06-23 | 30d | 20d | 0d |  | Verdi Alessandro (IIJ) | 240h | 53,400 | 53,400 |
| 70 | 1.5.4 | Task 5.4 - Collaudo del sistema di ricarica |  | 30d | 2027-06-24 | 2027-08-04 | 69 | 2027-06-24 | 2027-08-04 | 30d | 20d | 0d |  | Meggiorini Riccardo (ESE) | 240h | 57,000 | 57,000 |
| 71 | 1.5.5 | Task 5.5 - Test di sicurezza |  | 15d | 2027-06-24 | 2027-07-14 | 69 | 2027-06-24 | 2027-07-14 | 15d | 35d | 15d |  | Ruggeri Elena (CYB) | 120h | 41,600 | 41,600 |
| 72 | 1.5.6 | Task 5.6 - Test Funzionali |  | 25d | 2027-08-05 | 2027-09-08 | 70, 71 | 2027-08-05 | 2027-09-08 | 25d | 20d | 0d |  | Cacciatore Fabrizio (RTF) | 200h | 70,000 | 70,000 |
| 73 | 1.5.7 | D5.1 - DroneDock | milestone | 0d | 2027-09-08 | 2027-09-08 | 72, 71 | 2027-09-08 | 2027-09-08 | 0d | 45d |  |  |  |  |  |  |
| 74 | 1.5.8 | Task 5.7 - Piano di manutenzione predittiva |  | 10d | 2027-09-09 | 2027-09-22 | 72 | 2027-09-09 | 2027-09-22 | 10d | 35d | 15d |  | Grimaldi Tommaso (IM) | 80h | 23,200 | 23,200 |
| 75 | 1.5.9 | Task 5.8 - Redazione dei manuali |  | 25d | 2027-09-09 | 2027-10-13 | 72 | 2027-09-09 | 2027-10-13 | 25d | 20d | 0d |  | Grimaldi Tommaso (IM) | 200h | 8,000 | 8,000 |
| 76 | 1.5.10 | D5.2 - Piano di manutenzione predittiva e manuali | milestone | 0d | 2027-10-13 | 2027-10-13 | 75, 74 | 2027-10-13 | 2027-10-13 | 0d | 20d |  |  |  |  |  |  |
| 77 | 1.6 | **OR6** |  | 290d | 2026-04-09 | 2027-05-19 |  | 2026-04-09 | 2027-05-19 | 290d | 0d |  |  |  | 1552h | 513,440 | 513,440 |
| 78 | 1.6.1 | Task 6.1 - Analisi dei requisiti |  | 15d | 2026-04-09 | 2026-04-29 | 6 | 2026-04-09 | 2026-04-29 | 15d | 0d |  |  | Montanari Giulia (RL) | 120h | 16,000 | 16,000 |
| 79 | 1.6.2 | Task 6.2 - Studio localizzazione punti di consegna |  | 20d | 2026-04-30 | 2026-05-27 | 78 | 2026-04-30 | 2026-05-27 | 20d | 0d |  |  | Montanari Giulia (RL) | 160h | 23,000 | 23,000 |
| 80 | 1.6.3 | Task 6.3 - Richiesta permessi edilizi e urbanistici |  | 180d | 2026-05-28 | 2027-02-03 | 79 | 2026-05-28 | 2027-02-03 | 180d | 0d |  | finish no later than 2027-02-03 | Neri Matteo (RI) [5%] | 72h | 83,960 | 83,960 |
| 81 | 1.6.4 | Task 6.4 - Progettazione tecnica |  | 25d | 2026-04-30 | 2026-06-03 | 78 | 2026-04-30 | 2026-06-03 | 25d | 375d |  |  | Meggiorini Riccardo (ESE) | 200h | 35,000 | 35,000 |
| 82 | 1.6.5 | Task 6.5 - Approvvigionamento |  | 25d | 2026-11-19 | 2026-12-23 | 80FF-30d | 2026-11-19 | 2026-12-23 | 25d | 210d | 0d |  | Ferretti Davide (RA) | 200h | 190,000 | 190,000 |
| 83 | 1.6.6 | Task 6.6 - Costruzione prototipi |  | 20d | 2026-12-24 | 2027-01-20 | 82 | 2026-12-24 | 2027-01-20 | 20d | 210d | 110d |  | Montanari Giulia (RL) [50%]; Gamberini Alessandro (TA) | 240h | 40,080 | 40,080 |
| 84 | 1.6.7 | Task 6.7 - Installazione |  | 30d | 2027-02-04 | 2027-03-17 | 80 | 2027-02-04 | 2027-03-17 | 30d | 0d |  |  | Montanari Giulia (RL) [50%] | 120h | 56,000 | 56,000 |
| 85 | 1.6.8 | D6.1 - Rete Locker urbana | milestone | 0d | 2027-03-17 | 2027-03-17 | 84 | 2027-03-17 | 2027-03-17 | 0d | 170d |  |  |  |  |  |  |
| 86 | 1.6.9 | Task 6.8 - Integrazione con piattaforma UTM |  | 20d | 2027-03-18 | 2027-04-14 | 84, 23 | 2027-03-18 | 2027-04-14 | 20d | 0d |  |  | Dainelli Dario (IS) [50%]; Verdi Alessandro (IIJ) [50%] | 160h | 46,800 | 46,800 |
| 87 | 1.6.10 | D6.2 - Integrazione software Locker | milestone | 0d | 2027-04-14 | 2027-04-14 | 86 | 2027-04-14 | 2027-04-14 | 0d | 150d |  |  |  |  |  |  |
| 88 | 1.6.11 | Milestone 5 | milestone | 0d | 2027-04-14 | 2027-04-14 | 84, 86 | 2027-04-14 | 2027-04-14 | 0d | 150d |  |  |  |  |  |  |
| 89 | 1.6.12 | Task 6.9 - Test di consegna e ritiro pacchi |  | 10d | 2027-04-15 | 2027-04-28 | 86 | 2027-04-15 | 2027-04-28 | 10d | 0d |  |  | Moretti Chiara (SC) | 80h | 12,400 | 12,400 |
| 90 | 1.6.13 | Task 6.10 - Validazione sicurezza e collaudo finale |  | 10d | 2027-04-29 | 2027-05-12 | 89 | 2027-04-29 | 2027-05-12 | 10d | 0d |  |  | Lattanzi Paolo (RS) | 80h | 4,400 | 4,400 |
| 91 | 1.6.14 | Task 6.11 - Redazione manuale operativo |  | 5d | 2027-05-13 | 2027-05-19 | 90 | 2027-05-13 | 2027-05-19 | 5d | 125d | 0d |  | Montanari Giulia (RL) | 40h | 2,000 | 2,000 |
| 92 | 1.6.15 | Task 6.12 - Redazione piano manutenzione |  | 5d | 2027-05-13 | 2027-05-19 | 90 | 2027-05-13 | 2027-05-19 | 5d | 125d | 0d |  | Grimaldi Tommaso (IM) | 40h | 1,600 | 1,600 |
| 93 | 1.6.16 | Task 6.13 - Redazione schede tecniche |  | 5d | 2027-05-13 | 2027-05-19 | 90 | 2027-05-13 | 2027-05-19 | 5d | 125d |  |  | Ferri Luca (IA) | 40h | 2,200 | 2,200 |
| 94 | 1.6.17 | D6.3 - Manuale d'uso e manutenzione | milestone | 0d | 2027-05-19 | 2027-05-19 | 91, 92 | 2027-05-19 | 2027-05-19 | 0d | 125d |  |  |  |  |  |  |

| ID | WBS | Task | Type | Duration | Start | Finish | Predecessors | Baseline start | Baseline finish | Baseline duration | Total slack | Free slack | Constraint | Resources | Work | Cost | Baseline cost |
| --- | --- | --- | --- | --- | --- | --- | --- | --- | --- | --- | --- | --- | --- | --- | --- | --- | --- |
| 95 | 1.7 | **OR7** |  | 240d | 2026-04-23 | 2027-03-24 |  | 2026-04-23 | 2027-03-24 | 240d | 0d |  |  |  | 1372h | 368,280 | 368,280 |
| 96 | 1.7.1 | Task 7.1 - Analisi dei requisiti |  | 15d | 2026-04-23 | 2026-05-13 | 6 | 2026-04-23 | 2026-05-13 | 15d | 0d |  |  | Bianco Giacomo (II1) | 120h | 22,200 | 22,200 |
| 97 | 1.7.2 | Task 7.2 - Approvvigionamento |  | 5d | 2026-05-14 | 2026-05-20 | 96 | 2026-05-14 | 2026-05-20 | 5d | 385d |  |  | Ferretti Davide (RA) | 40h | 27,000 | 27,000 |
| 98 | 1.7.3 | Task 7.3 Sviluppo web-app |  | 25d | 2026-05-14 | 2026-06-17 | 96 | 2026-05-14 | 2026-06-17 | 25d | 0d |  |  | Graziani Francesco (IIJ) | 200h | 37,000 | 37,000 |
| 99 | 1.7.4 | Task 7.4 - Sviluppo app mobile |  | 50d | 2026-06-18 | 2026-12-16 | 98 | 2026-06-18 | 2026-12-16 | 50d | 0d |  |  | Verdi Alessandro (IIJ) | 400h | 74,000 | 74,000 |
| 100 | 1.7.5 | Task 7.5 - Integrazione con sistema UTM |  | 35d | 2026-12-17 | 2027-02-03 | 99, 23 | 2026-12-17 | 2027-02-03 | 35d | 0d |  |  | Dainelli Dario (IS) [30%]; Graziani Francesco (IIJ) [40%]; Verdi Alessandro (IIJ) [40%] | 308h | 67,040 | 67,040 |
| 101 | 1.7.6 | Task 7.6 - Test funzionali e stress test |  | 10d | 2027-02-04 | 2027-02-17 | 100 | 2027-02-04 | 2027-02-17 | 10d | 0d |  |  | Ruggeri Elena (CYB) | 80h | 24,400 | 24,400 |
| 102 | 1.7.7 | Task 7.7 - Test di sicurezza |  | 10d | 2027-02-18 | 2027-03-03 | 101 | 2027-02-18 | 2027-03-03 | 10d | 180d |  |  | Ruggeri Elena (CYB) | 80h | 29,400 | 29,400 |
| 103 | 1.7.8 | Task 7.8 - Validazione GDPR e privacy |  | 5d | 2027-02-18 | 2027-02-24 | 101 | 2027-02-18 | 2027-02-24 | 5d | 185d |  |  | Lattanzi Paolo (RS) | 40h | 22,200 | 22,200 |
| 104 | 1.7.9 | Task 7.9 - Redazione manuale utente |  | 5d | 2027-02-18 | 2027-02-24 | 101 | 2027-02-18 | 2027-02-24 | 5d | 0d |  |  | Moretti Chiara (SC) | 40h | 1,200 | 1,200 |
| 105 | 1.7.10 | Task 7.10 - Rilascio in ambiente di produzione |  | 5d | 2027-02-25 | 2027-03-03 | 104 | 2027-02-25 | 2027-03-03 | 5d | 0d |  | finish no later than 2027-03-03 | Bianco Giacomo (II1) | 40h | 17,400 | 17,400 |
| 106 | 1.7.11 | Milestone 8 | milestone | 0d | 2027-03-03 | 2027-03-03 | 105 | 2027-03-03 | 2027-03-03 | 0d | 180d |  |  |  |  |  |  |
| 107 | 1.7.12 | D7.1 - App Mobile | milestone | 0d | 2027-03-03 | 2027-03-03 | 105 | 2027-03-03 | 2027-03-03 | 0d | 180d | 165d |  |  |  |  |  |
| 108 | 1.7.13 | D7.2 - Sito Web | milestone | 0d | 2027-03-03 | 2027-03-03 | 105 | 2027-03-03 | 2027-03-03 | 0d | 180d | 165d |  |  |  |  |  |
| 109 | 1.7.14 | Task 7.11 - Monitoraggio delle performance |  | 15d | 2027-03-04 | 2027-03-24 | 105 | 2027-03-04 | 2027-03-24 | 15d | 165d |  |  | Bianco Giacomo (II1) [20%] | 24h | 46,440 | 46,440 |
| 110 | 1.8 | **OR8** |  | 415d | 2026-04-09 | 2027-11-10 |  | 2026-04-09 | 2027-11-10 | 415d | 0d |  |  |  | 2104h | 375,440 | 363,920 |
| 111 | 1.8.1 | Task 8.1 - Definizione dell’immagine e della comunicazione del progetto |  | 15d | 2026-04-09 | 2026-04-29 | 6 | 2026-04-09 | 2026-04-29 | 15d | 5d | 0d |  | Rinaldi Stefano (MC) | 120h | 14,000 | 14,000 |
| 112 | 1.8.2 | Task 8.2 - Redazione del piano di comunicazione |  | 10d | 2026-04-30 | 2026-05-13 | 111 | 2026-04-30 | 2026-05-13 | 10d | 5d | 0d |  | Rinaldi Stefano (MC) | 80h | 9,000 | 9,000 |
| 113 | 1.8.3 | Task 8.3 - Approvvigionamento servizi media |  | 20d | 2026-05-14 | 2026-06-10 | 112 | 2026-05-14 | 2026-06-10 | 20d | 5d | 0d |  | Ferretti Davide (RA) | 160h | 28,000 | 28,000 |
| 114 | 1.8.4 | Task 8.4 - Realizzazione pagine social |  | 5d | 2026-06-11 | 2026-06-17 | 113 | 2026-06-11 | 2026-06-17 | 5d | 5d | 0d |  | Rinaldi Stefano (MC) | 40h | 4,000 | 4,000 |
| 115 | 1.8.5 | D8.2 - Pagine social | milestone | 0d | 2026-06-17 | 2026-06-17 | 114 | 2026-06-17 | 2026-06-17 | 0d | 365d |  |  |  |  |  |  |
| 116 | 1.8.6 | Task 8.5 - Gestione pagine social |  | 360d | 2026-06-18 | 2027-11-03 | 114 | 2026-06-18 | 2027-11-03 | 360d | 5d |  |  | Rinaldi Stefano (MC) [10%] | 288h | 54,400 | 42,880 |
| 117 | 1.8.7 | Task 8.6 - Creazione materiali promozionali |  | 30d | 2026-05-14 | 2026-06-24 | 112 | 2026-05-14 | 2026-06-24 | 30d | 360d | 0d |  | Rinaldi Stefano (MC) | 240h | 37,000 | 37,000 |
| 118 | 1.8.8 | D8.1 - Piano di Marketing | milestone | 0d | 2026-06-24 | 2026-06-24 | 117 | 2026-06-24 | 2026-06-24 | 0d | 360d |  |  |  |  |  |  |
| 119 | 1.8.9 | Task 8.7 - Lancio campagna pubblicitaria locale e online |  | 130d | 2027-05-13 | 2027-11-10 | 90, 105 | 2027-05-13 | 2027-11-10 | 130d | 0d |  | start no earlier than 2027-05-13 | Rinaldi Stefano (MC) [20%] | 208h | 110,400 | 110,400 |
| 120 | 1.8.10 | Milestone 7 | milestone | 0d | 2027-05-13 | 2027-05-13 | 119SS, 114 | 2027-05-13 | 2027-05-13 | 0d | 130d |  |  |  |  |  |  |
| 121 | 1.8.11 | Task 8.8 - Organizzazione eventi pubblici e dimostrazioni operative |  | 40d | 2027-05-13 | 2027-07-07 | 119SS | 2027-05-13 | 2027-07-07 | 40d | 90d | 0d |  | Neri Matteo (RI) | 320h | 47,600 | 47,600 |
| 122 | 1.8.12 | D8.3 - Eventi pubblici e dimostrazioni | milestone | 0d | 2027-07-07 | 2027-07-07 | 121 | 2027-07-07 | 2027-07-07 | 0d | 90d | 0d |  |  |  |  |  |
| 123 | 1.8.13 | Task 8.9 - Avviare contatti con UNIVPM |  | 20d | 2026-04-09 | 2026-05-06 | 6 | 2026-04-09 | 2026-05-06 | 20d | 395d |  |  | Neri Matteo (RI) | 160h | 13,800 | 13,800 |
| 124 | 1.8.14 | Task 8.10 - Campagne informative sostenibilità e impatto |  | 30d | 2027-05-13 | 2027-06-23 | 119SS | 2027-05-13 | 2027-06-23 | 30d | 100d | 10d |  | Conti Federica (IAE) | 240h | 25,800 | 25,800 |
| 125 | 1.8.15 | Task 8.11 - Raccolta feedback utenti e stakeholder |  | 30d | 2027-06-24 | 2027-08-04 | 119SS+30d | 2027-06-24 | 2027-08-04 | 30d | 45d | 0d |  | Moretti Chiara (SC) [20%] | 48h | 11,440 | 11,440 |
| 126 | 1.8.16 | Task 8.12 - Analisi risultati campagne |  | 25d | 2027-08-05 | 2027-09-08 | 125 | 2027-08-05 | 2027-09-08 | 25d | 45d | 0d |  | Rinaldi Stefano (MC) | 200h | 20,000 | 20,000 |
| 127 | 1.8.17 | D8.4 - Report feedback | milestone | 0d | 2027-09-08 | 2027-09-08 | 126, 125 | 2027-09-08 | 2027-09-08 | 0d | 45d |  |  |  |  |  |  |

| ID | WBS | Task | Type | Duration | Start | Finish | Predecessors | Baseline start | Baseline finish | Baseline duration | Total slack | Free slack | Constraint | Resources | Work | Cost | Baseline cost |
| --- | --- | --- | --- | --- | --- | --- | --- | --- | --- | --- | --- | --- | --- | --- | --- | --- | --- |
| 128 | 1.9 | **OR9** |  | 335d | 2026-04-09 | 2027-07-21 |  | 2026-01-15 | 2027-11-10 | 475d? | 80d |  |  |  | 1592h | 231,960 | 231,960 |
| 129 | 1.9.1 | Task 9.1 - Identificazione tecnologie brevettabili |  | 25d | 2026-04-09 | 2026-05-13 | 6 | 2026-04-09 | 2026-05-13 | 25d | 80d | 0d | start no earlier than 2026-04-08 | Lattanzi Paolo (RS) | 200h | 36,000 | 36,000 |
| 130 | 1.9.2 | Task 9.2 - Analisi opportunità di innovazione |  | 140d | 2026-09-03 | 2027-03-17 | 129 | 2026-09-03 | 2027-03-17 | 140d | 80d | 0d |  | Bianco Giacomo (II1) [50%]; Graziani Francesco (IIJ) [50%] | 840h | 83,400 | 83,400 |
| 131 | 1.9.3 | Task 9.3 - Raccolta idee innovative |  | 40d | 2027-03-18 | 2027-05-12 | 130 | 2027-03-18 | 2027-05-12 | 40d | 80d | 0d |  | Allegri Max (PM) [50%] | 160h | 22,000 | 22,000 |
| 132 | 1.9.4 | Task 9.4 - Collaborazione con UNIVPM e partner industriali |  | 240d | 2026-04-09 | 2027-03-10 | 6 | 2026-04-09 | 2027-03-10 | 240d | 175d |  |  | Neri Matteo (RI) [10%] | 192h | 45,560 | 45,560 |
| 133 | 1.9.5 | Task 9.5 - Aggiornamento roadmap tecnologica |  | 50d | 2027-05-13 | 2027-07-21 | 131 | 2027-05-13 | 2027-07-21 | 50d | 80d | 0d |  | Allegri Max (PM) [50%] | 200h | 45,000 | 45,000 |
| 134 | 1.9.6 | D9.1 - Roadmap espansione | milestone | 0d | 2027-07-21 | 2027-07-21 | 133 | 2027-07-21 | 2027-07-21 | 0d | 80d | 0d |  |  |  |  |  |
| 135 | 1.9.7 | Milestone 9 | milestone | 0d | 2027-07-21 | 2027-07-21 | 134 | 2027-07-21 | 2027-07-21 | 0d | 80d |  |  |  |  |  |  |
| 136 | 1.10 | **OR: SAL** |  | 460d | 2026-02-04 | 2027-11-10 |  | 2026-02-04 | 2027-11-10 | 460d | 0d |  |  |  |  |  |  |
| 137 | 1.10.1 | SAL1 | milestone | 0d | 2026-02-04 | 2026-02-04 | 8, 7, 5 | 2026-02-04 | 2026-02-04 | 0d | 460d |  |  |  |  |  |  |
| 138 | 1.10.2 | SAL 2 | milestone | 0d | 2026-10-28 | 2026-10-28 | 53, 20, 35, 36 | 2026-10-28 | 2026-10-28 | 0d | 270d |  |  |  |  |  |  |
| 139 | 1.10.3 | SAL 3 | milestone | 0d | 2027-06-23 | 2027-06-23 | 56, 57, 84 | 2027-06-23 | 2027-06-23 | 0d | 100d |  |  |  |  |  |  |
| 140 | 1.10.4 | SAL 4 | milestone | 0d | 2027-10-20 | 2027-10-20 | 107, 108, 48, 42 | 2027-10-20 | 2027-10-20 | 0d | 15d |  |  |  |  |  |  |
| 141 | 1.10.5 | SAL 5 | milestone | 0d | 2027-07-07 | 2027-07-07 | 124, 122 | 2027-07-07 | 2027-07-07 | 0d | 90d |  |  |  |  |  |  |
| 142 | 1.10.6 | SAL 6 | milestone | 0d | 2027-11-10 | 2027-11-10 | 17, 134 | 2027-11-10 | 2027-11-10 | 0d | 0d |  |  |  |  |  |  |
